# Children's Book Schedule

Schedule from MS Project, 2015-04-06 to 2015-11-26, costs in $.
Lucerne Publishing

## Calendars

- Standard: Mon-Fri 08:00-12:00, 13:00-17:00; Sat-Sun off.
- Monday-Wednesday: Mon-Wed 08:00-12:00, 13:00-17:00; Thu-Sun off.

## Resources

| Resource | Group | Unit | Rate |
| --- | --- | --- | --- |
| Carole Poland | Editorial |  | 52.5 |
| Copyeditors | Editorial |  | 45 |
| Dan Jump | Design |  | 75.5 |
| Hany Morcos | Editorial |  | 38.75 |
| Jane Dow | Editorial |  | 63.25 |
| Jun Cao | Editorial |  | 42 |
| Luis Sousa | Design |  | 70 |
| Printing Service | Production |  |  |
| Travel | Other |  |  |
| Tad Orman | Other |  |  |
| Color Setting Services | Production |  |  |
| Bound galley proofs | Production | copies | 15 |

## Schedule

| ID | WBS | Task | Type | Duration | Start | Finish | Predecessors | Baseline start | Baseline finish | Baseline duration | Total slack | Constraint | Deadline | Resources | Work | Cost | Baseline cost | Editorial Focus |
| --- | --- | --- | --- | --- | --- | --- | --- | --- | --- | --- | --- | --- | --- | --- | --- | --- | --- | --- |
| 1 | 1 | **Editorial staff meeting** |  | 60.12d | 2015-04-13 08:00 | 2015-07-06 09:00 |  | 2015-04-13 08:00 | 2015-07-06 09:00 | 60.12d | 103.75d |  |  |  | 45.5h | 2,223 | 2,223 |  |
| 2 | 1.1 | Editorial staff meeting 1 |  | 1h | 2015-04-13 08:00 | 2015-04-13 09:00 |  | 2015-04-13 08:00 | 2015-04-13 09:00 | 1h | 163.75d | start no earlier than 2015-04-13 08:00 |  | Carole Poland; Jun Cao; Hany Morcos; Dan Jump [50%] | 3.5h | 171 | 171 |  |
| 3 | 1.2 | Editorial staff meeting 2 |  | 1h | 2015-04-20 08:00 | 2015-04-20 09:00 |  | 2015-04-20 08:00 | 2015-04-20 09:00 | 1h | 158.75d | start no earlier than 2015-04-20 08:00 |  | Carole Poland; Jun Cao; Hany Morcos; Dan Jump [50%] | 3.5h | 171 | 171 |  |
| 4 | 1.3 | Editorial staff meeting 3 |  | 1h | 2015-04-27 08:00 | 2015-04-27 09:00 |  | 2015-04-27 08:00 | 2015-04-27 09:00 | 1h | 153.75d | start no earlier than 2015-04-27 08:00 |  | Carole Poland; Jun Cao; Hany Morcos; Dan Jump [50%] | 3.5h | 171 | 171 |  |
| 5 | 1.4 | Editorial staff meeting 4 |  | 1h | 2015-05-04 08:00 | 2015-05-04 09:00 |  | 2015-05-04 08:00 | 2015-05-04 09:00 | 1h | 148.75d | start no earlier than 2015-05-04 08:00 |  | Carole Poland; Jun Cao; Hany Morcos; Dan Jump [50%] | 3.5h | 171 | 171 |  |
| 6 | 1.5 | Editorial staff meeting 5 |  | 1h | 2015-05-11 08:00 | 2015-05-11 09:00 |  | 2015-05-11 08:00 | 2015-05-11 09:00 | 1h | 143.75d | start no earlier than 2015-05-11 08:00 |  | Carole Poland; Jun Cao; Hany Morcos; Dan Jump [50%] | 3.5h | 171 | 171 |  |
| 7 | 1.6 | Editorial staff meeting 6 |  | 1h | 2015-05-18 08:00 | 2015-05-18 09:00 |  | 2015-05-18 08:00 | 2015-05-18 09:00 | 1h | 138.75d | start no earlier than 2015-05-18 08:00 |  | Carole Poland; Jun Cao; Hany Morcos; Dan Jump [50%] | 3.5h | 171 | 171 |  |
| 8 | 1.7 | Editorial staff meeting 7 |  | 1h | 2015-05-25 08:00 | 2015-05-25 09:00 |  | 2015-05-25 08:00 | 2015-05-25 09:00 | 1h | 133.75d | start no earlier than 2015-05-25 08:00 |  | Carole Poland; Jun Cao; Hany Morcos; Dan Jump [50%] | 3.5h | 171 | 171 |  |
| 9 | 1.8 | Editorial staff meeting 8 |  | 1h | 2015-06-01 08:00 | 2015-06-01 09:00 |  | 2015-06-01 08:00 | 2015-06-01 09:00 | 1h | 128.75d | start no earlier than 2015-06-01 08:00 |  | Carole Poland; Jun Cao; Hany Morcos; Dan Jump [50%] | 3.5h | 171 | 171 |  |
| 10 | 1.9 | Editorial staff meeting 9 |  | 1h | 2015-06-08 08:00 | 2015-06-08 09:00 |  | 2015-06-08 08:00 | 2015-06-08 09:00 | 1h | 123.75d | start no earlier than 2015-06-08 08:00 |  | Carole Poland; Jun Cao; Hany Morcos; Dan Jump [50%] | 3.5h | 171 | 171 |  |
| 11 | 1.10 | Editorial staff meeting 10 |  | 1h | 2015-06-15 08:00 | 2015-06-15 09:00 |  | 2015-06-15 08:00 | 2015-06-15 09:00 | 1h | 118.75d | start no earlier than 2015-06-15 08:00 |  | Carole Poland; Jun Cao; Hany Morcos; Dan Jump [50%] | 3.5h | 171 | 171 |  |
| 12 | 1.11 | Editorial staff meeting 11 |  | 1h | 2015-06-22 08:00 | 2015-06-22 09:00 |  | 2015-06-22 08:00 | 2015-06-22 09:00 | 1h | 113.75d | start no earlier than 2015-06-22 08:00 |  | Carole Poland; Jun Cao; Hany Morcos; Dan Jump [50%] | 3.5h | 171 | 171 |  |
| 13 | 1.12 | Editorial staff meeting 12 |  | 1h | 2015-06-29 08:00 | 2015-06-29 09:00 |  | 2015-06-29 08:00 | 2015-06-29 09:00 | 1h | 108.75d | start no earlier than 2015-06-29 08:00 |  | Carole Poland; Jun Cao; Hany Morcos; Dan Jump [50%] | 3.5h | 171 | 171 |  |
| 14 | 1.13 | Editorial staff meeting 13 |  | 1h | 2015-07-06 08:00 | 2015-07-06 09:00 |  | 2015-07-06 08:00 | 2015-07-06 09:00 | 1h | 103.75d | start no earlier than 2015-07-06 08:00 |  | Carole Poland; Jun Cao; Hany Morcos; Dan Jump [50%] | 3.5h | 171 | 171 |  |
| 15 | 2 | **Acquisition** |  | 35.5d | 2015-04-06 08:00 | 2015-05-25 12:00 |  | 2015-04-06 08:00 | 2015-05-18 10:00 | 30.25d | 0d |  |  |  | 444h | 18,264 | 9,900 |  |
| 16 | 2.1 | Manuscript received | milestone | 0d | 2015-04-06 08:00 | 2015-04-06 08:00 |  | 2015-04-06 08:00 | 2015-04-06 08:00 | 0d | 0d |  |  |  |  |  |  |  |
| 17 | 2.2 | Content edit |  | 15d | 2015-04-06 08:00 | 2015-04-30 10:00 | 16 | 2015-04-06 08:00 | 2015-04-30 10:00 | 15d | 0d |  |  | Carole Poland | 120h | 6,300 | 6,300 | Full developmental edit |
| 18 | 2.3 | Original art review |  | 10.25d | 2015-04-23 10:00 | 2015-05-07 12:00 | 17FS-5d |  |  |  | 0d |  |  | Hany Morcos; Jane Dow | 164h | 8,364 |  |  |
| 19 | 2.4 | Author review of content edit |  | 12d | 2015-05-07 13:00 | 2015-05-25 12:00 | 17, 18 | 2015-04-30 10:00 | 2015-05-18 10:00 | 12d | 0d |  |  | Tad Orman; Copyeditors | 160h | 3,600 | 3,600 | Incorp must-fix issues |
| 20 | 2.5 | Handoff to Editorial | milestone | 0d | 2015-05-25 12:00 | 2015-05-25 12:00 | 19 | 2015-05-18 10:00 | 2015-05-18 10:00 | 0d | 0d |  | 2015-05-29 17:00 | Carole Poland |  |  |  |  |
| 21 | 3 | **Editorial** |  | 29.12d | 2015-05-25 13:00 | 2015-07-03 14:00 | 15 | 2015-05-18 10:00 | 2015-06-26 11:00 | 29.12d | 0d |  |  |  | 400h | 15,670 | 15,670 |  |
| 22 | 3.1 | Organize manuscript for copyedit |  | 5.12d | 2015-05-25 13:00 | 2015-06-01 14:00 |  | 2015-05-18 10:00 | 2015-05-25 11:00 | 5.12d | 0d |  |  | Hany Morcos; Dan Jump [50%] | 60h | 3,060 | 3,060 | Address outstanding line edit issues |
| 23 | 3.2 | Copyedit |  | 11.25d | 2015-06-01 14:00 | 2015-06-16 16:00 | 22 | 2015-05-25 11:00 | 2015-06-09 14:00 | 11.25d | 0d |  |  | Copyeditors [200%] | 180h | 8,100 | 8,100 | Style Guide compliance |
| 24 | 3.3 | Author review of copyedit |  | 10d | 2015-06-16 16:00 | 2015-06-30 16:00 | 23 | 2015-06-09 14:00 | 2015-06-23 14:00 | 10d | 0d |  |  | Tad Orman; Copyeditors [25%] | 100h | 900 | 900 | Incorp must-fix issues |
| 25 | 3.4 | Copyedit incorp |  | 5.12d | 2015-06-26 11:00 | 2015-07-03 14:00 | 24FS-2.5% | 2015-06-19 09:00 | 2015-06-26 11:00 | 5.12d | 0d |  |  | Carole Poland; Dan Jump [50%] | 60h | 3,610 | 3,610 | Incorp must-fix issues |
| 26 | 3.5 | Handoff to Production | milestone | 0d | 2015-07-03 14:00 | 2015-07-03 14:00 | 25 | 2015-06-26 11:00 | 2015-06-26 11:00 | 0d | 0d |  |  | Hany Morcos |  |  |  |  |

| ID | WBS | Task | Type | Duration | Start | Finish | Predecessors | Baseline start | Baseline finish | Baseline duration | Total slack | Free slack | Constraint | Calendar | Resources | Work | Cost | Baseline cost |
| --- | --- | --- | --- | --- | --- | --- | --- | --- | --- | --- | --- | --- | --- | --- | --- | --- | --- | --- |
| 27 | 4 | **Design and Production** |  | 58.25d | 2015-07-03 14:00 | 2015-09-23 16:00 | 21 | 2015-06-26 11:00 | 2015-09-09 14:00 | 53.25d | 0d |  |  |  |  | 888h | 46,679 | 43,619 |
| 28 | 4.1 | Set pages |  | 15d | 2015-07-03 14:00 | 2015-07-24 14:00 |  | 2015-06-26 11:00 | 2015-07-17 11:00 | 15d | 0d |  |  |  | Jane Dow | 120h | 7,590 | 7,590 |
| 29 | 4.2 | Interior illustration design |  | 15.25d | 2015-07-03 14:00 | 2015-07-24 16:00 | 28SS | 2015-06-26 11:00 | 2015-07-17 14:00 | 15.25d | 0d |  |  |  | Luis Sousa; Hany Morcos | 240h | 13,050 | 13,050 |
| 30 | 4.3 | **1st Pages review** |  | 30d | 2015-07-24 16:00 | 2015-09-04 16:00 | 29 | 2015-07-17 14:00 | 2015-08-21 14:00 | 25d | 0d |  |  |  |  | 320h | 13,860 | 10,800 |
| 31 | 4.3.1 | Proofread and index |  | 10d | 2015-07-24 16:00 | 2015-08-07 16:00 |  | 2015-07-17 14:00 | 2015-07-31 14:00 | 10d | 0d |  | start no earlier than 2015-07-17 08:00 |  | Tad Orman; Copyeditors | 100h | 900 | 900 |
| 32 | 4.3.2 | Incorporate 1st Pages review |  | 10d | 2015-08-07 16:00 | 2015-08-21 16:00 | 31 | 2015-07-31 14:00 | 2015-08-07 14:00 | 5d | 0d |  |  |  | Hany Morcos; Dan Jump [50%] | 120h | 6,120 | 3,060 |
| 33 | 4.3.3 | Send proofed pages to Production | milestone | 0d | 2015-08-21 16:00 | 2015-08-21 16:00 | 32 | 2015-08-07 14:00 | 2015-08-07 14:00 | 0d | 0d |  |  |  | Hany Morcos |  |  |  |
| 34 | 4.3.4 | Enter page corrections and index |  | 5d | 2015-08-21 16:00 | 2015-08-28 16:00 | 33 | 2015-08-07 14:00 | 2015-08-14 14:00 | 5d | 0d |  |  |  | Jane Dow; Dan Jump [50%] | 60h | 4,040 | 4,040 |
| 35 | 4.3.5 | Cover design |  | 5d | 2015-08-28 16:00 | 2015-09-04 16:00 | 34 | 2015-08-14 14:00 | 2015-08-21 14:00 | 5d | 0d |  |  |  | Luis Sousa | 40h | 2,800 | 2,800 |
| 36 | 4.4 | **2nd Pages review** |  | 13d | 2015-09-04 16:00 | 2015-09-23 16:00 |  | 2015-08-21 14:00 | 2015-09-09 14:00 | 13d | 0d |  |  |  |  | 120h | 6,345 | 6,345 |
| 37 | 4.4.1 | Proof and review |  | 6.5d | 2015-09-04 16:00 | 2015-09-15 11:00 | 35 | 2015-08-21 14:00 | 2015-09-01 09:00 | 6.5d | 0d |  |  |  | Hany Morcos | 40h | 1,800 | 1,800 |
| 38 | 4.4.2 | Send proofed pages to Production | milestone | 0d | 2015-09-15 11:00 | 2015-09-15 11:00 | 37 | 2015-09-01 09:00 | 2015-09-01 09:00 | 0d | 0d |  |  |  | Hany Morcos |  |  |  |
| 39 | 4.4.3 | Final review |  | 5d | 2015-09-16 16:00 | 2015-09-23 16:00 | 38 | 2015-09-02 14:00 | 2015-09-09 14:00 | 5d | 0d |  |  |  | Jane Dow; Hany Morcos [50%]; Carole Poland [50%]; Bound galley proofs [20 copies] | 80h | 4,545 | 4,545 |
| 40 | 4.5 | **Design book's companion website** |  | 10d | 2015-09-04 16:00 | 2015-09-18 16:00 | 30 | 2015-08-21 14:00 | 2015-09-04 14:00 | 10d | 3d |  |  |  |  | 88h | 5,834 | 5,834 |
| 41 | 4.5.1 | Create mockup |  | 4.5d | 2015-09-04 16:00 | 2015-09-16 16:00 |  | 2015-08-21 14:00 | 2015-09-02 14:00 | 4.5d | 3d | 0d |  |  | Luis Sousa; Hany Morcos | 48h | 2,610 | 2,610 |
| 42 | 4.5.2 | Review with author |  | 2d | 2015-09-16 16:00 | 2015-09-18 16:00 | 41 | 2015-09-02 14:00 | 2015-09-04 14:00 | 2d | 3d |  |  |  | Luis Sousa; Tad Orman; Travel [0.1%]; Dan Jump [50%] | 40h | 3,224 | 3,224 |
| 43 | 5 | **Color prep and printing** |  | 46d | 2015-09-23 16:00 | 2015-11-26 16:00 | 40 | 2015-09-09 14:00 | 2015-11-12 14:00 | 46d | 0d |  |  |  |  | 328h | 5,310 | 5,310 |
| 44 | 5.1 | Send to color house |  | 1d | 2015-09-23 16:00 | 2015-09-28 16:00 | 36 | 2015-09-09 14:00 | 2015-09-14 14:00 | 1d | 0d |  |  | Monday-Wednesday | Hany Morcos | 8h | 310 | 310 |
| 45 | 5.2 | Generate proofs |  | 10d | 2015-09-28 16:00 | 2015-10-12 16:00 | 44 | 2015-09-14 14:00 | 2015-09-28 14:00 | 10d | 0d |  |  |  | Color Setting Services | 80h | 5,000 | 5,000 |
| 46 | 5.3 | Print and ship |  | 30d | 2015-10-15 16:00 | 2015-11-26 16:00 | 45FS+3d | 2015-10-01 14:00 | 2015-11-12 14:00 | 30d | 0d |  |  |  | Printing Service | 240h |  |  |
| 47 | 6 | **Book launch prep** |  | 22d | 2015-09-28 16:00 | 2015-10-28 16:00 |  | 2015-09-04 14:00 | 2015-10-02 14:00 | 20d | 21d |  |  |  |  | 212h | 9,442 | 9,410 |
| 48 | 6.1 | Launch planning |  | 5d | 2015-09-28 16:00 | 2015-10-05 16:00 | 44 | 2015-09-04 14:00 | 2015-09-16 14:00 | 8d | 21d | 0d |  |  | Carole Poland [50%]; Jane Dow | 36h | 2,062 | 3,580 |
| 49 | 6.2 | Assign launch team members |  | 1d | 2015-10-05 16:00 | 2015-10-06 16:00 | 48 | 2015-09-16 14:00 | 2015-09-17 14:00 | 1d | 21d | 0d |  |  | Carole Poland | 8h | 420 | 420 |
| 50 | 6.3 | Complete author questionnaire |  | 5d | 2015-10-06 16:00 | 2015-10-13 16:00 | 49 | 2015-09-17 14:00 | 2015-09-24 14:00 | 5d | 21d | 0d |  |  | Hany Morcos; Tad Orman; Travel [0.1%] | 80h | 3,550 | 3,550 |
| 51 | 6.4 | Schedule author interviews |  | 1d | 2015-10-13 16:00 | 2015-10-14 16:00 | 50 | 2015-09-24 14:00 | 2015-09-25 14:00 | 1d | 21d | 0d |  |  | Hany Morcos | 8h | 310 | 310 |
| 52 | 6.5 | Design and order marketing material |  | 10d | 2015-10-14 16:00 | 2015-10-28 16:00 | 51 | 2015-09-25 14:00 | 2015-10-02 14:00 | 5d | 21d |  |  |  | Hany Morcos | 80h | 3,100 | 1,550 |
